# H:\Southern New Hampshire CIS Courses\IT 625\IT 625 - Course Information\IT 625 - Medical Informatics\IT 625 - 2017 - Updates\IT625 Medical Informatics Case Study Project Plan

Schedule from MS Project, 2017-02-14 to 2018-06-29, status date 2017-03-15, costs in $, A marks actual dates.

## Calendars

- Standard: Mon-Fri 08:00-12:00, 13:00-17:00; Sat-Sun off. Exceptions (off unless hours are given): 2017-09-02 08:00-12:00, 13:00-17:00, 2017-11-07 to 2019-11-05 (USA Election Day, recurring), 2017-11-11 08:00-12:00, 13:00-17:00, 2017-11-23 (Thanksgiving Day, recurring), 2017-11-24 (Black Friday, recurring), 2017-12-24 (Christmas Eve, recurring), 2017-12-25 (Christmas Day, recurring), 2017-12-31 (New Year's Eve, recurring), 2018-01-01 (New Year's Day, recurring), 2018-01-02 to 2019-01-02 (2nd January, recurring), 2018-01-15 to 2019-01-21 (Martin Luther King Day, recurring), 2018-02-19 to 2019-02-18 (Presidents' Day, recurring), 2018-05-01 to 2020-05-01 (May Day, recurring), 2018-05-28 to 2019-05-27 (Memorial Day, recurring), 2018-06-19 to 2021-06-19 (Juneteenth, recurring).

## Resources

| Resource | Rate | Cost per use |
| --- | --- | --- |
| Business Analyst | 50 | 15 |
| ETL Dev 1 | 75 |  |
| ETL Dev 2 | 75 |  |
| Report Dev 1 | 90 |  |
| Project Manager | 80 | 20 |
| Architect | 75 |  |
| QA | 50 |  |
| Report Dev 2 | 90 |  |
| Project Manager | 75 |  |
| SME | 60 |  |
| IS Manager | 95 |  |
| Business Owner | 100 |  |
| All stakeholders |  | 10 |
| DBA1 | 90 | 10 |
| Developer 1 | 90 |  |
| Technical Support | 55 |  |
| Developer 2 |  |  |
| <New Resource> |  |  |
| Upper Management |  |  |
| MS VS Dev 1 |  |  |
| MS VS Dev 2 |  |  |
| SQL Dev 1 |  |  |
| Legal Team |  |  |
| Sponsor |  |  |

## Schedule

| ID | WBS | Task | Type | Duration | Start | Finish | Predecessors | Complete | Remaining | Baseline start | Baseline finish | Baseline duration | Baseline 1 start | Baseline 1 finish | Total slack | Constraint | Resources | Work | Actual work | Cost | Baseline cost | Actual cost |
| --- | --- | --- | --- | --- | --- | --- | --- | --- | --- | --- | --- | --- | --- | --- | --- | --- | --- | --- | --- | --- | --- | --- |
| 1 | 1 | **Wellness Vendor Project** |  | 350d? | 2017-02-14 A | 2018-06-29 |  | 12% | 308.26d? | 2017-02-14 | 2017-12-31 | 232d | 2015-05-04 | 2016-06-08 | 0d |  |  | 3555.6h | 898.8h | 254,976 | 234,124 | 69,233 |
| 2 | 1.1 | **Initiation** |  | 24.6d | 2017-05-04 A | 2017-06-07 |  | 89% | 2.71d | 2017-05-04 | 2017-06-06 | 24d | 2015-05-04 | 2015-06-04 | 268.4d |  |  | 80h | 71.2h | 7,680 | 7,680 | 6,824 |
| 3 | 1.1.1 | Budget dollar service request |  | 5d | 2017-05-04 A | 2017-05-10 A | 4 | 100% |  | 2017-05-04 | 2017-05-10 | 5d | 2015-05-04 | 2015-05-08 |  |  | IS Manager | 40h | 40h | 3,800 | 3,800 | 3,800 |
| 4 | 1.1.2 | Project Charter |  | 2d | 2017-06-03 A | 2017-06-06 | 68 | 75% | 0.5d | 2017-06-03 | 2017-06-06 | 2d | 2015-06-03 | 2015-06-04 | 0d | finish no earlier than 2015-06-03 | Business Owner | 16h | 12h | 1,600 | 1,600 | 1,200 |
| 5 | 1.1.3 | Obtain Approvals | milestone | 3d | 2017-06-02 A | 2017-06-07 | 4 | 80% | 0.6d | 2017-06-02 | 2017-06-06 | 3d | 2015-06-02 | 2015-06-04 | 268.4d | start no earlier than 2015-04-23 | IS Manager | 24h | 19.2h | 2,280 | 2,280 | 1,824 |
| 6 | 1.2 | **Planning** |  | 123d? | 2017-06-11 A | 2017-11-30 |  | 34% | 80.92d? | 2017-06-11 | 2017-08-07 | 41d | 2015-06-11 | 2015-08-04 | 143d |  |  | 144h | 120h | 10,440 | 10,440 | 8,760 |
| 7 | 1.2.1 | Project Plan |  | 8d | 2017-07-15 A | 2017-08-04 A | 5 | 100% |  | 2017-07-15 | 2017-08-04 | 8d | 2015-07-15 | 2015-08-04 |  | finish no earlier than 2015-08-04 | Project Manager | 64h | 64h | 4,800 | 4,800 | 4,800 |
| 8 | 1.2.2 | Resource allocation approvals |  | 4d | 2017-06-11 A | 2017-08-07 | 7 | 75% | 1d | 2017-06-11 | 2017-08-07 | 4d | 2015-06-11 | 2015-06-16 | 225d | finish no earlier than 2017-06-15 | Project Manager | 32h | 24h | 2,400 | 2,400 | 1,800 |
| 9 | 1.2.3 | **Communication** |  | 88d? | 2017-07-29 A | 2017-11-30 |  | 8% | 81.23d? | 2017-07-29 | 2017-08-02 | 3d | 2015-07-29 | 2015-08-03 | 143d |  |  | 48h | 32h | 3,240 | 3,240 | 2,160 |
| 10 | 1.2.3.1 | Develop Communication Plan | milestone | 0d | 2017-07-29 A | 2017-07-29 A | 7 | 100% |  | 2017-07-29 | 2017-07-29 | 0d | 2015-07-29 | 2015-07-29 |  | start no earlier than 2015-07-29 | Project Manager |  |  |  |  |  |
| 11 | 1.2.3.2 | Create new legal documents |  | 23d? | 2017-10-27 | 2017-11-30 |  |  |  |  |  |  |  |  | 145d | finish no earlier than 2017-11-30 |  |  |  |  |  |  |
| 12 | 1.2.3.3 | Review/Approve Communication Plan | milestone | 3d | 2017-07-31 A | 2017-08-02 | 10 | 67% | 1d | 2017-07-31 | 2017-08-02 | 3d | 2015-07-31 | 2015-08-03 | 228d | finish no earlier than 2017-08-02 | Project Manager; SME | 48h | 32h | 3,240 | 3,240 | 2,160 |
| 13 | 1.3 | Project Kickoff | milestone | 1d | 2017-05-05 A | 2017-05-05 A |  | 100% |  | 2017-05-05 | 2017-05-05 | 1d | 2015-08-05 | 2015-08-05 |  |  | All stakeholders | 56h | 56h | 10 | 10 | 10 |
| 14 | 1.4 | **Execution** |  | 173d? | 2017-07-13 A | 2018-03-20 |  | 31% | 120.08d? | 2017-07-13 | 2017-12-22 | 119d | 2015-07-13 | 2015-12-21 | 70d |  |  | 2771.6h | 651.6h | 197,324 | 197,324 | 53,639 |
| 15 | 1.4.1 | **Vendor Wellness DB Tables** |  | 55d | 2017-08-10 A | 2017-10-24 |  | 98% | 1.02d | 2017-08-10 | 2017-10-24 | 55d | 2015-08-10 | 2015-10-22 | 168d |  |  | 424h | 416h | 35,685 | 35,685 | 35,285 |
| 16 | 1.4.1.1 | **Create Tables** |  | 48d | 2017-08-10 A | 2017-10-13 A |  | 100% |  | 2017-08-10 | 2017-10-13 | 48d | 2015-08-10 | 2015-10-13 |  |  |  | 368h | 368h | 32,525 | 32,525 | 32,525 |
| 17 | 1.4.1.1.1 | Create/Modify vendor database tables |  | 41d | 2017-08-10 A | 2017-10-04 A |  | 100% |  | 2017-08-10 | 2017-10-04 | 41d | 2015-08-10 | 2015-10-02 |  | finish no earlier than 2015-07-20 | DBA1 | 320h | 320h | 28,810 | 28,810 | 28,810 |
| 18 | 1.4.1.1.2 | Promote tables to QA |  | 2d | 2017-10-12 A | 2017-10-13 A | 17 | 100% |  | 2017-10-12 | 2017-10-13 | 2d | 2015-10-12 | 2015-10-13 |  | finish no earlier than 2015-07-24 | DBA1 | 16h | 16h | 1,450 | 1,450 | 1,450 |
| 19 | 1.4.1.1.3 | Validate tables |  | 2d | 2017-10-05 A | 2017-10-06 A | 18 | 100% |  | 2017-10-05 | 2017-10-06 | 2d | 2015-10-05 | 2015-10-07 |  | finish no earlier than 2015-07-17 | DBA1 | 16h | 16h | 1,450 | 1,450 | 1,450 |
| 20 | 1.4.1.1.4 | UAT |  | 2d | 2017-10-05 A | 2017-10-06 A | 19 | 100% |  | 2017-10-05 | 2017-10-06 | 2d | 2015-10-05 | 2015-10-06 |  | start no earlier than 2015-09-03 | Business Analyst | 16h | 16h | 815 | 815 | 815 |
| 21 | 1.4.1.2 | **Promote Tables to Production** |  | 27d | 2017-09-16 A | 2017-10-24 |  | 86% | 3.86d | 2017-09-16 | 2017-10-24 | 27d | 2015-09-16 | 2015-10-22 | 168d |  |  | 56h | 48h | 3,160 | 3,160 | 2,760 |
| 22 | 1.4.1.2.1 | Create production ticket SR# |  | 3d | 2017-09-16 A | 2017-09-20 A |  | 100% |  | 2017-09-16 | 2017-09-20 | 3d | 2015-09-16 | 2015-09-18 |  | start no earlier than 2015-09-16 | Business Analyst | 24h | 24h | 1,215 | 1,215 | 1,215 |
| 23 | 1.4.1.2.2 | Deploy Tables |  | 1d | 2017-10-19 A | 2017-10-19 A |  | 100% |  | 2017-10-19 | 2017-10-19 | 1d | 2015-10-19 | 2015-10-19 |  | start no earlier than 2015-09-17 | DBA1 | 8h | 8h | 730 | 730 | 730 |
| 24 | 1.4.1.2.3 | Validate Tables |  | 3d | 2017-10-20 A | 2017-10-24 | 23 | 67% | 1d | 2017-10-20 | 2017-10-24 | 3d | 2015-10-20 | 2015-10-22 | 168d | finish no earlier than 2015-10-22 | Business Analyst | 24h | 16h | 1,215 | 1,215 | 815 |

| ID | WBS | Task | Duration | Start | Finish | Predecessors | Complete | Baseline start | Baseline finish | Baseline duration | Baseline 1 start | Baseline 1 finish | Total slack | Free slack | Constraint | Resources | Work | Actual work | Cost | Baseline cost | Actual cost |
| --- | --- | --- | --- | --- | --- | --- | --- | --- | --- | --- | --- | --- | --- | --- | --- | --- | --- | --- | --- | --- | --- |
| 25 | 1.4.2 | **Final Code Review-Module 1** | 27d | 2017-09-07 A | 2017-10-13 A |  | 100% | 2017-09-07 | 2017-10-13 | 27d | 2015-09-07 | 2015-10-16 |  |  |  |  | 120h | 120h | 9,215 | 9,215 | 9,215 |
| 26 | 1.4.2.1 | Module 1 code review | 21d | 2017-09-07 A | 2017-10-05 A |  | 100% | 2017-09-07 | 2017-10-05 | 21d | 2015-09-07 | 2015-10-05 |  |  | finish no earlier than 2015-10-05 | Developer 1 | 80h | 80h | 7,200 | 7,200 | 7,200 |
| 27 | 1.4.2.2 | Validate data accuracy | 5d | 2017-10-09 A | 2017-10-13 A | 26 | 100% | 2017-10-09 | 2017-10-13 | 5d | 2015-10-09 | 2015-10-16 |  |  | finish no earlier than 2015-10-16 | Business Analyst | 40h | 40h | 2,015 | 2,015 | 2,015 |
| 28 | 1.4.3 | **Final Code Review-Module 2** | 26d | 2017-09-07 A | 2017-10-12 A |  | 100% | 2017-09-07 | 2017-10-12 | 26d | 2015-09-07 | 2015-10-16 |  |  |  |  | 115.6h | 115.6h | 9,139 | 9,139 | 9,139 |
| 29 | 1.4.3.1 | Module 2 code review | 21d | 2017-09-07 A | 2017-10-05 A |  | 100% | 2017-09-07 | 2017-10-05 | 21d | 2015-09-07 | 2015-10-05 |  |  | finish no earlier than 2015-10-05 | Developer 1 | 83.6h | 83.6h | 7,524 | 7,524 | 7,524 |
| 30 | 1.4.3.2 | Validate data accuracy | 4d | 2017-10-09 A | 2017-10-12 A | 29 | 100% | 2017-10-09 | 2017-10-12 | 4d | 2015-10-09 | 2015-10-16 |  |  | finish no earlier than 2015-10-16 | Business Analyst | 32h | 32h | 1,615 | 1,615 | 1,615 |
| 31 | 1.4.4 | **Final Code Review-Module 3** | 42d? | 2017-10-16 | 2017-12-14 |  |  | 2017-10-05 | 2017-11-17 | 33d | 2015-10-05 | 2015-10-26 | 70d |  |  |  | 128h |  | 1,625 | 1,625 |  |
| 32 | 1.4.4.1 | Resolve Dispute Between DBA & Architect | 12d? | 2017-10-16 | 2017-10-31 |  |  |  |  |  |  |  | 72d | 0d | finish no earlier than 2017-10-31 |  |  |  |  |  |  |
| 33 | 1.4.4.2 | Module 3 code review | 12d | 2017-11-01 | 2017-11-16 | 32 |  | 2017-10-05 | 2017-10-20 | 12d | 2015-10-05 | 2015-10-20 | 133d | 1d | start no earlier than 2017-10-05 | All stakeholders | 96h |  | 10 | 10 |  |
| 34 | 1.4.4.3 | Validate data accuracy | 4d | 2017-12-11 | 2017-12-14 | 33 |  | 2017-11-14 | 2017-11-17 | 4d | 2015-10-21 | 2015-10-26 | 135d |  |  | Business Analyst | 32h |  | 1,615 | 1,615 |  |
| 35 | 1.4.5 | **Wellness Vendor Reporting** | 173d? | 2017-07-13 | 2018-03-20 |  |  | 2017-07-13 | 2017-12-22 | 119d | 2015-07-13 | 2015-12-21 | 70d |  |  |  | 1984h |  | 141,660 | 141,660 |  |
| 36 | 1.4.5.1 | **Requirements** | 135d | 2017-07-13 | 2018-01-24 |  |  | 2017-07-13 | 2017-12-07 | 108d | 2015-07-13 | 2015-10-29 | 108d |  |  |  | 640h |  | 41,740 | 41,740 |  |
| 37 | 1.4.5.1.1 | Define Business Rules | 32d | 2017-07-13 | 2017-12-12 |  |  | 2017-07-13 | 2017-12-07 | 32d | 2015-07-13 | 2015-08-03 | 137d |  | start no earlier than 2017-07-13 | Business Analyst; Project Manager | 256h |  | 16,675 | 16,675 |  |
| 38 | 1.4.5.1.2 | Data Mapping | 22d | 2017-09-28 | 2017-12-05 |  |  | 2017-09-28 | 2017-11-30 | 22d | 2015-09-28 | 2015-10-12 | 142d |  | start no earlier than 2017-09-28 | Business Analyst; Project Manager | 176h |  | 11,475 | 11,475 |  |
| 39 | 1.4.5.1.3 | Report mockups | 8d | 2017-10-17 | 2017-12-04 |  |  | 2017-10-17 | 2017-11-29 | 8d | 2015-10-13 | 2015-10-16 | 110d | 0d | start no earlier than 2017-10-17 | Business Analyst; Project Manager | 64h |  | 4,195 | 4,195 |  |
| 40 | 1.4.5.1.4 | Documentation and Current Mockup Layouts | 18d | 2017-12-05 | 2018-01-24 | 39 |  | 2017-10-19 | 2017-12-01 | 18d | 2015-10-19 | 2015-10-29 | 110d |  | start no earlier than 2017-10-19 | Business Analyst; Project Manager | 144h |  | 9,395 | 9,395 |  |
| 41 | 1.4.5.2 | Requirements Approved | 2d | 2017-09-02 | 2017-09-04 |  |  | 2017-09-02 | 2017-09-04 | 2d | 2015-09-02 | 2015-09-03 | 206d |  | start no earlier than 2017-09-02 |  |  |  |  |  |  |
| 42 | 1.4.5.3 | **Report Development** | 106d? | 2017-10-13 | 2018-03-20 |  |  | 2017-10-13 | 2017-12-22 | 52d | 2015-10-13 | 2015-12-21 | 70d |  |  |  | 1344h |  | 99,920 | 99,920 |  |
| 43 | 1.4.5.3.1 | Report file layout data mapping | 16d | 2017-10-31 | 2017-12-11 |  |  | 2017-10-31 | 2017-12-06 | 16d | 2015-10-30 | 2015-11-20 | 136d | 0d | start no earlier than 2017-10-31 | Report Dev 1 | 128h |  | 11,520 | 11,520 |  |
| 44 | 1.4.5.3.2 | Report UAT | 8d | 2017-12-13 | 2017-12-22 |  |  | 2017-12-13 | 2017-12-22 | 8d | 2015-11-18 | 2015-11-27 | 129d |  | start no earlier than 2017-12-13 | Report Dev 1 | 64h |  | 5,760 | 5,760 |  |
| 45 | 1.4.5.3.3 | Reports Approved by Business Owner/Vendor | 2d | 2017-12-12 | 2017-12-13 | 43 |  | 2017-12-05 | 2017-12-06 | 2d | 2015-12-04 | 2015-12-07 | 136d |  | start no earlier than 2017-12-05 | IS Manager; Business Owner | 32h |  | 3,120 | 3,120 |  |
| 46 | 1.4.5.3.4 | **QA** | 106d? | 2017-10-13 | 2018-03-20 |  |  | 2017-10-13 | 2017-12-20 | 50d | 2015-10-13 | 2015-12-21 | 70d |  |  |  | 1120h |  | 79,520 | 79,520 |  |
| 47 | 1.4.5.3.4.1 | Test Case Creation | 22d | 2017-10-13 | 2017-11-13 |  |  | 2017-10-13 | 2017-11-11 | 22d | 2015-10-13 | 2015-11-11 | 128d | 0d | start no earlier than 2017-10-13 | QA | 176h |  | 8,800 | 8,800 |  |
| 48 | 1.4.5.3.4.2 | Test Case Execution | 28d | 2017-11-14 | 2017-12-26 | 47 |  | 2017-11-13 | 2017-12-20 | 28d | 2015-11-12 | 2015-12-21 | 128d |  | start no earlier than 2016-11-12 | QA | 224h |  | 11,200 | 11,200 |  |
| 49 | 1.4.5.3.4.3 | Develop & maintain new testing/debugging/isue tracker system | 21d? | 2018-02-20 | 2018-03-20 | 67 |  |  |  |  |  |  | 72d |  | finish no earlier than 2018-01-31 |  |  |  |  |  |  |
| 50 | 1.4.5.3.4.4 | Deploy Reports to Production | 2d | 2017-11-10 | 2017-11-11 |  |  | 2017-11-10 | 2017-11-11 | 2d | 2015-11-10 | 2015-11-11 | 157d |  | start no earlier than 2017-11-10 | Developer 1 | 16h |  | 1,440 | 1,440 |  |

Notes:
- 31: Project BEHIND

| ID | WBS | Task | Type | Duration | Start | Finish | Predecessors | Baseline start | Baseline finish | Baseline duration | Baseline 1 start | Baseline 1 finish | Total slack | Free slack | Constraint | Resources | Work | Cost | Baseline cost |
| --- | --- | --- | --- | --- | --- | --- | --- | --- | --- | --- | --- | --- | --- | --- | --- | --- | --- | --- | --- |
| 51 | 1.4.5.3.4.5 | **UAT** |  | 45d | 2017-11-11 | 2018-01-19 |  | 2017-11-11 | 2017-12-18 | 27d | 2015-11-11 | 2015-12-10 | 111d |  |  |  | 704h | 58,080 | 58,080 |
| 52 | 1.4.5.3.4.5.1 | Testing Support |  | 8d | 2017-11-11 | 2017-12-20 |  | 2017-11-11 | 2017-12-18 | 8d | 2015-11-11 | 2015-11-16 | 113d | 0d | start no earlier than 2017-11-11 | ETL Dev 1; Report Dev 1; ETL Dev 2; Report Dev 2 | 128h | 10,560 | 10,560 |
| 53 | 1.4.5.3.4.5.2 | Remediation |  | 4d | 2017-12-21 | 2017-12-27 | 52 | 2017-11-17 | 2017-11-22 | 4d | 2015-11-17 | 2015-11-20 | 113d | 0d | start no earlier than 2017-11-17 | ETL Dev 1; Report Dev 1; ETL Dev 2; Report Dev 2 | 128h | 10,560 | 10,560 |
| 54 | 1.4.5.3.4.5.3 | Production Support |  | 14d | 2017-12-28 | 2018-01-19 | 53 | 2017-11-23 | 2017-12-12 | 14d | 2015-11-23 | 2015-12-10 | 113d |  | start no earlier than 2016-11-23 | ETL Dev 1; ETL Dev 2; Report Dev 1; Report Dev 2 | 448h | 36,960 | 36,960 |
| 55 | 1.5 | **Oversight** |  | 255d | 2017-06-27 | 2018-06-29 |  | 2017-07-13 | 2017-11-15 | 92d | 2015-07-13 | 2015-11-17 | 0d |  |  |  | 408h | 31,622 | 11,410 |
| 56 | 1.5.1 | Project Manager |  | 255d | 2017-06-27 | 2018-06-29 |  | 2017-07-13 | 2017-11-15 | 92d | 2015-07-13 | 2015-11-17 | 0d |  | finish no earlier than 2018-06-29 | Project Manager [10%] | 204h | 16,322 | 5,890 |
| 57 | 1.5.2 | Architect |  | 255d | 2017-06-27 | 2018-06-29 |  | 2017-07-13 | 2017-11-15 | 92d | 2015-07-13 | 2015-11-17 | 0d |  | finish no earlier than 2018-06-29 | Architect [10%] | 204h | 15,300 | 5,520 |
| 58 | 1.6 | **Go-Live** |  | 16d | 2018-05-31 | 2018-06-22 |  | 2017-12-21 | 2017-12-21 | 1d | 2016-06-06 | 2016-06-08 | 0d |  |  |  | 8h |  |  |
| 59 | 1.6.1 | Go-Live Milestone |  | 16d | 2018-05-31 | 2018-06-22 |  | 2017-12-21 | 2017-12-21 | 1d | 2016-06-06 | 2016-06-06 | 0d |  | finish no earlier than 2018-06-22 |  |  |  |  |
| 60 | 1.6.2 | Module Reports in Production- Go live |  | 3d | 2018-06-06 | 2018-06-09 |  | 2017-12-21 | 2017-12-21 | 1d | 2016-06-08 | 2016-06-08 | 10d |  | finish no earlier than 2018-06-09 |  | 8h |  |  |
| 61 | 1.7 | **Monitor and Control** |  | 330d? | 2017-02-14 | 2018-05-31 |  | 2017-02-14 | 2017-07-13 | 107d | 2015-07-13 | 2016-04-04 | 20d |  |  |  | 48h | 4,680 | 4,680 |
| 62 | 1.7.1 | **Support** |  | 330d? | 2017-02-14 | 2018-05-31 |  | 2017-02-14 | 2017-07-13 | 107d | 2015-07-13 | 2016-04-04 | 20d |  |  |  | 48h | 4,680 | 4,680 |
| 63 | 1.7.1.1 | Post new job ads to hire 3 new MS VS & SQL devs |  | 14d? | 2017-11-17 | 2017-12-08 | 64 |  |  |  |  |  | 72d | 0d | finish no earlier than 2017-11-17 |  |  |  |  |
| 64 | 1.7.1.2 | Negotiate w/ Upper Management for budget increase to hire new devs |  | 12d? | 2017-11-01 | 2017-11-16 | 32 |  |  |  |  |  | 72d | 0d | finish no earlier than 2017-10-31 |  |  |  |  |
| 65 | 1.7.1.3 | Hire & Onboard 3 new MS VS & SQL devs |  | 25d? | 2017-12-11 | 2018-01-18 | 63 |  |  |  |  |  | 72d | 0d | finish no earlier than 2017-12-22 |  |  |  |  |
| 66 | 1.7.1.4 | Create new proj plan w/ Upper Management w/ goal to rls MVP |  | 21d? | 2017-10-17 | 2017-11-14 |  |  |  |  |  |  | 155d |  | finish no earlier than 2017-11-14 |  |  |  |  |
| 67 | 1.7.1.5 | Training for all devs |  | 21d? | 2018-01-19 | 2018-02-16 | 65 |  |  |  |  |  | 72d | 0d | finish no earlier than 2017-12-29 |  |  |  |  |
| 68 | 1.7.1.6 | Define Support Process |  | 3d | 2017-02-14 | 2017-02-16 |  | 2017-02-14 | 2017-02-16 | 3d | 2016-03-28 | 2016-03-30 | 77.5d | 0d | start no earlier than 2017-02-14 | IS Manager | 24h | 2,280 | 2,280 |
| 69 | 1.7.1.7 | Review Support Process |  | 3d | 2017-02-17 | 2017-02-21 | 68 | 2017-02-17 | 2017-02-21 | 3d | 2016-03-31 | 2016-04-04 | 346d |  | start no earlier than 2016-03-31 | Business Owner | 24h | 2,400 | 2,400 |
| 70 | 1.7.1.8 | Make-Up Time Buffer 1 | manual | 22d | 2018-03-01 | 2018-03-30 |  |  |  |  |  |  |  |  |  |  |  |  |  |
| 71 | 1.7.1.9 | Make-Up Time Buffer 2 |  | 20d? | 2018-05-03 | 2018-05-31 |  |  |  |  |  |  | 20d |  | finish no earlier than 2018-05-31 |  |  |  |  |
| 72 | 1.7.1.10 | Support Process Approved | milestone | 0d | 2017-07-13 | 2017-07-13 |  | 2017-07-13 | 2017-07-13 | 0d | 2015-07-13 | 2015-07-13 | 245d |  | start no earlier than 2017-07-13 | IS Manager; Business Owner |  |  |  |
| 73 | 1.8 | **Closing** |  | 5d | 2018-06-25 | 2018-06-29 |  | 2017-12-27 | 2017-12-31 | 4d | 2016-06-24 | 2016-06-29 | 0d |  |  |  | 40h | 3,220 | 2,580 |
| 74 | 1.8.1 | Lessons Learned |  | 5d | 2018-06-25 | 2018-06-29 | 59, 60 | 2017-12-27 | 2017-12-31 | 4d | 2016-06-24 | 2016-06-29 | 0d |  | finish no earlier than 2018-06-29 | Project Manager | 40h | 3,220 | 2,580 |
